How a schedule from GanttProject changed from version to version. A marks actual dates.

## Version 1 (saved 2024-09-16)

Note of the change: v1.9.16: added devops & analyst, actualized 0 iter tasks

| ID | WBS | Task | Duration | Start | Finish | Predecessors | Complete |
| --- | --- | --- | --- | --- | --- | --- | --- |
| 1 | 1 | **OSTEST.ПУИТП** | 85d | 2024-09-02 | 2024-12-27 |  |  |
| 2 |  | Общее управление | 85d | 2024-09-02 | 2024-12-27 |  |  |
| 3 |  | Web: управление | 75d | 2024-09-16 | 2024-12-27 | 6 |  |
| 4 |  | Тесты: управление | 75d | 2024-09-16 | 2024-12-27 | 6 |  |
| 5 |  | Дополнение спецификации API обвязки и Exec | 75d | 2024-09-16 | 2024-12-27 | 12, 16 |  |
| 6 | 1.5 | **Фаза 0 - подготовка** | 10d | 2024-09-02 | 2024-09-13 |  |  |
| 7 |  | Фронт: инструкции | 10d | 2024-09-02 | 2024-09-13 |  |  |
| 8 |  | Фронт: заготовка | 5d | 2024-09-09 | 2024-09-13 |  |  |
| 9 |  | Бэк: инструкции | 10d | 2024-09-02 | 2024-09-13 |  |  |
| 10 |  | Бэк: заготовка | 5d | 2024-09-09 | 2024-09-13 |  |  |
| 11 |  | Схема данных | 10d | 2024-09-02 | 2024-09-13 |  |  |
| 12 |  | Описание API обвязки | 5d | 2024-09-09 | 2024-09-13 |  |  |
| 13 |  | Exec: демо | 10d | 2024-09-02 | 2024-09-13 |  |  |
| 14 |  | Exec: инструкции | 10d | 2024-09-02 | 2024-09-13 |  |  |
| 15 |  | Тесты: заготовка | 5d | 2024-09-02 | 2024-09-06 |  |  |
| 16 |  | Описание API Exec | 5d | 2024-09-09 | 2024-09-13 |  |  |
| 17 |  | Фаза 0 - дедлайн | 0d | 2024-09-16 | 2024-09-16 | 6 |  |
| 18 | 1.7 | **Фаза 1** | 25d | 2024-09-16 | 2024-10-18 | 6 |  |
| 19 |  | Тесты: доанализ требований | 25d | 2024-09-16 | 2024-10-18 |  |  |
| 20 |  | Web: доанализ требований | 25d | 2024-09-16 | 2024-10-18 |  |  |
| 21 |  | Автоматизация локального развертывания | 5d | 2024-09-16 | 2024-09-20 |  |  |
| 22 |  | Ручное развертывание в виртуалке | 10d | 2024-09-23 | 2024-10-04 | 21 |  |
| 23 |  | Github actions для развертывания по мерджу | 10d | 2024-10-07 | 2024-10-18 | 22 |  |
| 24 |  | Разработка тестовой методологии | 15d | 2024-09-16 | 2024-10-04 |  |  |
| 25 |  | Изучение требований, терминологии, тестирования | 15d | 2024-09-16 | 2024-10-04 |  |  |
| 26 |  | QA тестов 1 | 10d | 2024-10-07 | 2024-10-18 | 24, 25 |  |
| 27 |  | Тесты: обучение | 5d | 2024-09-16 | 2024-09-20 |  |  |
| 28 |  | Тесты исполняемого файла | 5d | 2024-09-23 | 2024-09-27 | 27 |  |
| 29 |  | Тесты модуля конфигурации | 5d | 2024-09-23 | 2024-09-27 | 27 |  |
| 30 |  | Тесты cli | 5d | 2024-09-30 | 2024-10-04 |  |  |
| 31 |  | Тесты логгера | 5d | 2024-09-30 | 2024-10-04 |  |  |
| 32 |  | Тесты IPC | 5d | 2024-10-07 | 2024-10-11 |  |  |
| 33 |  | Тесты корректности кэша | 5d | 2024-10-07 | 2024-10-11 |  |  |
| 34 |  | Интеграция: базовые тесты | 5d | 2024-10-14 | 2024-10-18 | 28, 29, 30, 31, 32, 33, 37, 38, 39, 40 |  |
| 35 |  | Exec: обучение | 5d | 2024-09-16 | 2024-09-20 |  |  |
| 36 |  | Exec: запуск бинарника | 5d | 2024-09-23 | 2024-09-27 | 35 |  |
| 37 |  | Exec: получение stdin | 5d | 2024-09-30 | 2024-10-04 | 36 |  |
| 38 |  | Exec: получение сокета | 5d | 2024-09-30 | 2024-10-04 | 36 |  |
| 39 |  | Exec: получение вывода | 5d | 2024-10-07 | 2024-10-11 | 36 |  |
| 40 |  | Exec: получение статистик /proc | 5d | 2024-10-07 | 2024-10-11 | 36 |  |
| 41 |  | Фронт: обучение | 5d | 2024-09-16 | 2024-09-20 |  |  |
| 42 |  | Авторизация пользователя | 5d | 2024-09-16 | 2024-09-20 |  |  |
| 43 |  | Изменение пароля | 5d | 2024-09-23 | 2024-09-27 | 42 |  |
| 44 |  | Получение групп для пользователя.. | 5d | 2024-09-30 | 2024-10-04 |  |  |
| 45 |  | Создание и редактирование группы | 5d | 2024-10-07 | 2024-10-11 | 44 |  |
| 46 |  | Интеграция: пользователи | 5d | 2024-10-14 | 2024-10-18 | 42, 43, 44, 45, 47, 48, 49, 50, 51, 52, 53 |  |
| 47 |  | Восстановление пароля | 5d | 2024-09-23 | 2024-09-27 | 41 |  |
| 48 |  | Welcome страница | 5d | 2024-09-23 | 2024-09-27 | 41 |  |
| 49 |  | Страница входа | 5d | 2024-09-23 | 2024-09-27 | 41 |  |
| 50 |  | Навигация в шапке | 5d | 2024-09-30 | 2024-10-04 |  |  |
| 51 |  | Личный кабинет | 5d | 2024-09-30 | 2024-10-04 | 49 |  |
| 52 |  | Создание редактирование группы | 5d | 2024-10-07 | 2024-10-11 |  |  |
| 53 |  | Экран групп | 5d | 2024-10-07 | 2024-10-11 |  |  |
| 54 |  | Восстановление пароля | 5d | 2024-09-16 | 2024-09-20 |  |  |
| 55 |  | Имплементация создания теста | 5d | 2024-09-16 | 2024-09-20 |  |  |
| 56 |  | Имплементация получения теста | 5d | 2024-09-23 | 2024-09-27 | 55 |  |
| 57 |  | Имплементация поиска тестов по имени | 5d | 2024-09-23 | 2024-09-27 | 55 |  |
| 58 |  | Имплементация удаления тестов | 5d | 2024-09-30 | 2024-10-04 | 55 |  |
| 59 |  | Имплементация редактирования тестов | 5d | 2024-09-30 | 2024-10-04 | 55 |  |
| 60 |  | Интеграция: тесты | 5d | 2024-10-14 | 2024-10-18 | 54, 55, 56, 57, 58, 59, 61, 62, 63, 64 |  |
| 61 |  | Модальное окно создания теста | 5d | 2024-09-23 | 2024-09-27 | 41 |  |
| 62 |  | Модальное окно просмотра теста | 5d | 2024-09-30 | 2024-10-04 |  |  |
| 63 |  | Модальное окно редактирования теста | 5d | 2024-10-07 | 2024-10-11 |  | 30% |
| 64 |  | Страница просмотра тестов | 5d | 2024-10-07 | 2024-10-11 |  |  |
| 65 |  | Имплементация создания лабораторной | 5d | 2024-09-16 | 2024-09-20 |  |  |
| 66 |  | Имплементация получения лабораторной | 5d | 2024-09-16 | 2024-09-20 |  |  |
| 67 |  | Имплементация редактирования лабораторной | 5d | 2024-09-23 | 2024-09-27 | 65 |  |
| 68 |  | Имплементация удаления лабораторной | 5d | 2024-09-23 | 2024-09-27 | 65 |  |
| 69 |  | Получение попыток сдачи | 5d | 2024-09-30 | 2024-10-04 |  |  |
| 70 |  | Интеграция: лабораторные | 5d | 2024-10-14 | 2024-10-18 | 65, 66, 67, 68, 71, 72, 73, 74 |  |

| ID | WBS | Task | Duration | Start | Finish | Predecessors |
| --- | --- | --- | --- | --- | --- | --- |
| 71 |  | Модальное окно создания лабораторной | 5d | 2024-09-23 | 2024-09-27 | 41 |
| 72 |  | Модальное окно редактирования лабораторной | 5d | 2024-09-23 | 2024-09-27 | 41 |
| 73 |  | Страница просмотра лабораторной | 5d | 2024-09-30 | 2024-10-04 |  |
| 74 |  | Страница просмотра лабораторных | 5d | 2024-10-07 | 2024-10-11 |  |
| 75 |  | Фаза 1 - дедлайн | 0d | 2024-10-28 | 2024-10-28 | 18 |
| 76 | 1.9 | **Фаза 2** | 20d | 2024-10-28 | 2024-11-22 | 18 |
| 77 |  | Тесты: доанализ требований 2 | 20d | 2024-10-28 | 2024-11-22 |  |
| 78 |  | Web: доанализ требований 2 | 20d | 2024-10-28 | 2024-11-22 |  |
| 79 |  | Мониторинг + алертинг | 15d | 2024-10-28 | 2024-11-15 |  |
| 80 |  | QA обвязки 1 | 10d | 2024-10-28 | 2024-11-08 |  |
| 81 |  | QA тестов 2 | 10d | 2024-11-11 | 2024-11-22 |  |
| 82 |  | Тесты многозадачности | 5d | 2024-10-28 | 2024-11-01 |  |
| 83 |  | Тесты сети | 10d | 2024-10-28 | 2024-11-08 |  |
| 84 |  | Тесты кэша | 5d | 2024-11-11 | 2024-11-15 |  |
| 85 |  | Нагрузочные тесты | 10d | 2024-11-04 | 2024-11-15 |  |
| 86 |  | Интеграция: нагрузочные тесты | 5d | 2024-11-18 | 2024-11-22 | 82, 83, 84, 85, 87, 88 |
| 87 |  | Exec: жесткие ограничения cgroup 1 | 15d | 2024-10-28 | 2024-11-15 |  |
| 88 |  | Exec: жесткие ограничения cgroup 2 | 15d | 2024-10-28 | 2024-11-15 |  |
| 89 |  | Часть модального окна создания/редактирования лабораторной - форма выбора тестов | 5d | 2024-10-28 | 2024-11-01 | 57, 71, 72 |
| 90 |  | Страница просмотра попыток сдачи | 5d | 2024-11-04 | 2024-11-08 | 69 |
| 91 |  | Модальное окно загрузки лабораторных | 5d | 2024-11-11 | 2024-11-15 | 90 |
| 92 |  | Интеграция попыток сдачи | 5d | 2024-11-18 | 2024-11-22 | 89, 90, 91, 93 |
| 93 |  | Проверка лабораторной в новой попытке сдачи | 10d | 2024-10-28 | 2024-11-08 |  |
| 94 |  | Создание сессий сдачи | 5d | 2024-10-28 | 2024-11-01 |  |
| 95 |  | Получение сессий сдачи | 5d | 2024-11-04 | 2024-11-08 |  |
| 96 |  | Поиск и фильтрация сессий сдачи | 5d | 2024-11-11 | 2024-11-15 |  |
| 97 |  | Интеграция сессий сдачи | 5d | 2024-11-18 | 2024-11-22 | 94, 95, 96, 98, 99, 100 |
| 98 |  | Просмотр сессий сдачи | 5d | 2024-10-28 | 2024-11-01 |  |
| 99 |  | Просмотр сессий сдачи студентов с поиском | 5d | 2024-11-04 | 2024-11-08 |  |
| 100 |  | Модификация страницы просмотра сессии сдачи - для преподавателя | 5d | 2024-11-11 | 2024-11-15 |  |
| 101 |  | Личная информация по всем пользователям | 5d | 2024-10-28 | 2024-11-01 |  |
| 102 |  | Личная информация пользователя | 5d | 2024-10-28 | 2024-11-01 |  |
| 103 |  | Создание/редактирование пользователя | 5d | 2024-11-04 | 2024-11-08 |  |
| 104 |  | Создание множества пользователей | 5d | 2024-11-11 | 2024-11-15 |  |
| 105 |  | Интеграция пользователей | 5d | 2024-11-18 | 2024-11-22 | 101, 102, 103, 104, 106, 107, 108 |
| 106 |  | Модалки создания редактирования пользователя | 5d | 2024-10-28 | 2024-11-01 |  |
| 107 |  | Экран всех пользователей для админа | 5d | 2024-11-04 | 2024-11-08 |  |
| 108 |  | Переход на экран группы | 5d | 2024-11-11 | 2024-11-15 |  |
| 109 |  | Фаза 2 - дедлайн | 0d | 2024-12-02 | 2024-12-02 | 76 |
| 110 | 1.11 | **Фаза 3** | 20d | 2024-12-02 | 2024-12-27 | 76 |
| 111 |  | Web: доанализ требований 3 | 20d | 2024-12-02 | 2024-12-27 |  |
| 112 |  | QA обвязки 2 | 10d | 2024-12-02 | 2024-12-13 |  |
| 113 |  | Общее QA | 10d | 2024-12-16 | 2024-12-27 |  |
| 114 |  | Модификация страницы просмотра лабораторных - для студента | 5d | 2024-12-02 | 2024-12-06 |  |
| 115 |  | Модификация страницы просмотра лабораторных - для учителя | 5d | 2024-12-02 | 2024-12-06 |  |
| 116 |  | Модификация страницы просмотра лабораторной - для студента | 5d | 2024-12-09 | 2024-12-13 |  |
| 117 |  | Модификация страницы просмотра лабораторной - для учителя | 5d | 2024-12-09 | 2024-12-13 |  |
| 118 |  | Модификация страницы просмотра попытки сдачи - для преподавателя | 5d | 2024-12-16 | 2024-12-20 |  |
| 119 |  | Переход к лабораторной по студенту | 5d | 2024-12-02 | 2024-12-06 |  |
| 120 |  | Фронт: исправление багов | 20d | 2024-12-02 | 2024-12-27 |  |
| 121 |  | Бэк: исправление багов | 20d | 2024-12-02 | 2024-12-27 |  |
| 122 |  | Данные для рейтинговой таблицы | 10d | 2024-12-02 | 2024-12-13 |  |
| 123 |  | Интеграция рейтинговой таблицы | 5d | 2024-12-23 | 2024-12-27 | 122, 124, 125 |
| 124 |  | Рейтинговая таблица | 10d | 2024-12-02 | 2024-12-13 |  |
| 125 |  | Сортировки по срезу | 5d | 2024-12-16 | 2024-12-20 | 122 |
| 126 |  | Тесты под valgrind и санитайзерами | 10d | 2024-12-02 | 2024-12-13 |  |
| 127 |  | Тесты с ограниченными ресурсами | 10d | 2024-12-02 | 2024-12-13 |  |
| 128 |  | Интеграция: дополнительные тесты | 5d | 2024-12-16 | 2024-12-20 | 126, 127, 129, 130 |
| 129 |  | Exec: ограничение fs, mount | 10d | 2024-12-02 | 2024-12-13 |  |
| 130 |  | Exec: ограничение network workspace | 10d | 2024-12-02 | 2024-12-13 |  |
| 131 |  | Фаза 3-дедлайн | 0d | 2024-12-30 | 2024-12-30 | 110FF |

## Version 2 (saved 2024-09-23)

Note of the change: v1.9.23: added devops resource analysis, removed forgot password, renamed a bit

Last finish stays 2024-12-30.

Added:

| ID | Task | Duration | Start | Finish | Resources |
| --- | --- | --- | --- | --- | --- |
| 22 | Анализ используемых ресурсов | 5d | 2024-09-23 | 2024-09-27 | Devops |
| 38 | Exec: запуск бинарника 2 | 5d | 2024-09-23 | 2024-09-27 | Sys dev 2 |

Removed: 47 Восстановление пароля; 54 Восстановление пароля

Changed:

| ID | Task | Start | Duration | Predecessors | Other |
| --- | --- | --- | --- | --- | --- |
| 23 | Ручное развертывание в виртуалке | 2024-09-23 → 2024-09-30 (+7d) | 10d → 5d | 21 → none |  |
| 30 | Тесты сборки |  |  |  | was named Тесты модуля конфигурации |
| 45 | Редактирование пользователя |  |  |  | was named Изменение пароля |
| 48 | Интеграция: пользователи |  |  | 44, 45, 46, 47, Восстановление пароля, 49, 50, 51, 52, 53, 54 → 44, 45, 46, 47, 49, 50, 51, 52, 53, 54 |  |
| 60 | Интеграция: тесты |  |  | Восстановление пароля, 55, 56, 57, 58, 59, 61, 62, 63, 64 → 55, 56, 57, 58, 59, 61, 62, 63, 64 |  |
